# Cronograma-ES-2-P1-FINAL

Schedule from MS Project, 2014-12-16 to 2015-04-01, A marks actual dates.

## Calendars

- Standard: Mon-Fri 08:00-12:00, 13:00-17:00; Sat-Sun off.

## Resources

| Resource |
| --- |
| Valdir/Gabriel |
| Rogerio |
| Roberto |
| Alex |
| Renan |
| Valdir |
| Gabriel |
| Thiago |
| Haroldo |

## Schedule

| ID | WBS | Task | Type | Duration | Start | Finish | Predecessors | Complete | Remaining | Resources | Work | Actual work | Classe do Recurso |
| --- | --- | --- | --- | --- | --- | --- | --- | --- | --- | --- | --- | --- | --- |
| 1 | 1 | **Gerência** |  | 77d | 2014-12-16 A | 2015-04-01 |  | 42% | 45.02d | Valdir; Gabriel | 2976h | 556h | Gerência |
| 2 | 1.1 | Revisão Documento de Requisitos | manual | 1d | 2014-12-16 | 2014-12-16 |  |  |  | Gabriel; Valdir | 16h |  | Gerência |
| 3 | 1.2 | Revisão do Ciclo I | manual | 32d | 2015-01-16 A | 2015-02-28 | 2 | 25% | 24d | Valdir; Gabriel | 512h | 128h | Gerência |
| 4 | 1.3 | Revisão do Ciclo II | manual | 27d | 2015-01-16 A | 2015-02-21 | 3SS | 25% | 20.25d | Gabriel; Valdir | 432h | 108h | Gerência |
| 5 | 1.4 | Revisão do Ciclo III | manual | 28d | 2015-02-22 | 2015-03-31 | 4SS |  |  | Gabriel; Valdir | 448h |  | Gerência |
| 6 | 1.5 | Finalização do Projeto | manual | 1d | 2015-03-31 | 2015-03-31 | 5 |  |  | Gabriel; Valdir | 16h |  | Gerência |
| 7 | 1.6 | **Ciclo I - RF 1, 2, 5, 6, 7, 9 - Planejar e Elaborar** |  | 32d | 2015-01-16 A | 2015-02-28 |  | 99% | 0d |  | 320h | 320h |  |
| 8 | 1.6.1 | Caso de Uso de Alto Nível | manual | 2d | 2015-01-16 A | 2015-01-17 A |  | 100% |  | Rogerio | 16h | 16h | Analista e Projetista |
| 9 | 1.6.2 | Revisão dos Casos de Uso de Alto Nível | manual | 2d | 2015-01-18 A | 2015-01-19 A | 8 | 100% |  | Roberto | 16h | 16h | SQA |
| 10 | 1.6.3 | Correção dos Casos de Uso de Alto Nível | manual | 1d | 2015-01-20 A | 2015-01-20 A | 9 | 100% |  | Rogerio | 8h | 8h | Analista e Projetista |
| 11 | 1.6.4 | Caso de Uso Expandido | manual | 2d | 2015-01-21 A | 2015-01-22 A | 10 | 100% |  | Alex | 16h | 16h | Analista e Projetista |
| 12 | 1.6.5 | Revisão dos Casos de Uso Expandido | manual | 1d | 2015-01-23 A | 2015-01-23 A | 11 | 100% |  | Renan | 8h | 8h | SQA |
| 13 | 1.6.6 | Correção dos Casos de Uso Expandido | manual | 1d | 2015-01-24 A | 2015-01-24 A | 12 | 100% |  | Alex | 8h | 8h | Analista e Projetista |
| 14 | 1.6.7 | Diagrama de Caso de Uso | manual | 1d | 2015-01-25 A | 2015-01-25 A | 13 | 100% |  | Rogerio | 8h | 8h | Analista e Projetista |
| 15 | 1.6.8 | Revisão do Diagrama de Caso de Uso | manual | 1d | 2015-01-26 A | 2015-01-26 A | 14 | 100% |  | Roberto | 8h | 8h | SQA |
| 16 | 1.6.9 | Correção do Diagrama de Caso de Uso | manual | 1d | 2015-01-27 A | 2015-01-27 A | 15 | 100% |  | Rogerio | 8h | 8h | Analista e Projetista |
| 17 | 1.6.10 | Definir Modelo Conceitual Inicial | manual | 2d | 2015-01-28 A | 2015-01-29 A | 16 | 100% |  | Alex | 16h | 16h | Analista e Projetista |
| 18 | 1.6.11 | Revisão do Modelo Conceitual Inicial | manual | 1d | 2015-01-30 A | 2015-01-30 A | 17 | 100% |  | Renan | 8h | 8h | SQA |
| 19 | 1.6.12 | Correção do Modelo Conceitual Inicial | manual | 1d | 2015-01-31 A | 2015-01-31 A | 18 | 100% |  | Alex | 8h | 8h | Analista e Projetista |
| 20 | 1.6.13 | Construir - Analisar - RTF | milestone, manual | 0d | 2015-02-01 | 2015-02-01 |  |  |  |  |  |  |  |
| 21 | 1.6.14 | Refinar Modelo Conceitual | manual | 2d | 2015-02-02 A | 2015-02-03 A | 19 | 100% |  | Rogerio | 16h | 16h | Analista e Projetista |
| 22 | 1.6.15 | Revisar Refinar Modelo Conceitual | manual | 1d | 2015-02-04 A | 2015-02-04 A | 21 | 100% |  | Roberto | 8h | 8h | SQA |
| 23 | 1.6.16 | Correção Refinar Modelo Conceitual | manual | 1d | 2015-02-05 A | 2015-02-05 A | 22 | 100% |  | Rogerio | 8h | 8h | Analista e Projetista |
| 24 | 1.6.17 | Definir Diagrama de Sequência do Sistema | manual | 3d | 2015-02-06 A | 2015-02-10 A | 23 | 100% |  | Alex | 24h | 24h | Analista e Projetista |
| 25 | 1.6.18 | Revisar Diagrama de Sequência do Sistema | manual | 1d | 2015-02-12 A | 2015-02-12 A | 24 | 100% |  | Renan | 8h | 8h | SQA |
| 26 | 1.6.19 | Correção do Diagrama de Sequência do Sistema | manual | 1d | 2015-02-13 A | 2015-02-13 A | 25 | 100% |  | Alex | 8h | 8h | Analista e Projetista |
| 27 | 1.6.20 | Construir - Projetar - RTF | milestone, manual | 0d | 2015-02-14 | 2015-02-14 |  |  |  |  |  |  |  |
| 28 | 1.6.21 | Diagrama de Colaboração | manual | 2d | 2015-02-15 A | 2015-02-16 A | 26 | 100% |  | Rogerio | 16h | 16h | Analista e Projetista |
| 29 | 1.6.22 | Revisar Diagrama de Colaboração | manual | 1d | 2015-02-17 A | 2015-02-17 A | 28 | 100% |  | Roberto | 8h | 8h | SQA |
| 30 | 1.6.23 | Correção do Diagrama de Colaboração | manual | 1d | 2015-02-18 A | 2015-02-18 A | 29 | 100% |  | Rogerio | 8h | 8h | Analista e Projetista |
| 31 | 1.6.24 | Definir Diagrama de Classe do Projeto | manual | 3d | 2015-02-19 A | 2015-02-21 A | 30 | 100% |  | Alex | 24h | 24h | Analista e Projetista |
| 32 | 1.6.25 | Revisar Diagrama de Classe do Projeto | manual | 1d | 2015-02-23 A | 2015-02-23 A | 31 | 100% |  | Renan | 8h | 8h | SQA |
| 33 | 1.6.26 | Correção do Diagrama de Classe do Projeto | manual | 1d | 2015-02-24 A | 2015-02-24 A | 32 | 100% |  | Alex | 8h | 8h | Analista e Projetista |
| 34 | 1.6.27 | Construir - Codificação | manual | 2d | 2015-02-25 A | 2015-02-26 A | 33 | 100% |  | Thiago | 16h | 16h | Programador |
| 35 | 1.6.28 | Construir Teste | manual | 2d | 2015-02-27 A | 2015-02-28 A | 34 | 100% |  | Renan; Roberto | 32h | 32h | SQA |

| ID | WBS | Task | Type | Duration | Start | Finish | Predecessors | Complete | Remaining | Resources | Work | Actual work | Classe do Recurso |
| --- | --- | --- | --- | --- | --- | --- | --- | --- | --- | --- | --- | --- | --- |
| 36 | 2 | **Ciclo II - RF 4, 8 - Planejar e Elaborar** |  | 27d | 2015-01-16 A | 2015-02-21 |  | 99% | 0d |  | 312h | 312h |  |
| 37 | 2.1 | Caso de Uso de Alto Nível | manual | 2d | 2015-01-16 A | 2015-01-17 A | 8SS | 100% |  | Alex | 16h | 16h | Analista e Projetista |
| 38 | 2.2 | Revisão dos Casos de Uso de Alto Nível | manual | 1d | 2015-01-18 A | 2015-01-18 A | 37 | 100% |  | Roberto | 8h | 8h | SQA |
| 39 | 2.3 | Correção dos Casos de Uso de Alto Nível | manual | 1d | 2015-01-19 A | 2015-01-19 A | 38 | 100% |  | Alex | 8h | 8h | Analista e Projetista |
| 40 | 2.4 | Caso de Uso Expandido | manual | 2d | 2015-01-20 A | 2015-01-21 A | 39 | 100% |  | Rogerio | 16h | 16h | Analista e Projetista |
| 41 | 2.5 | Revisão dos Casos de Uso Expandido | manual | 1d | 2015-01-22 A | 2015-01-22 A | 40 | 100% |  | Renan | 8h | 8h | SQA |
| 42 | 2.6 | Correção dos Casos de Uso Expandido | manual | 1d | 2015-01-23 A | 2015-01-23 A | 41 | 100% |  | Rogerio | 8h | 8h | Analista e Projetista |
| 43 | 2.7 | Diagrama de Caso de Uso | manual | 2d | 2015-01-24 A | 2015-01-25 A | 42 | 100% |  | Alex | 16h | 16h | Analista e Projetista |
| 44 | 2.8 | Revisão do Diagrama de Caso de Uso | manual | 1d | 2015-01-26 A | 2015-01-26 A | 43 | 100% |  | Roberto | 8h | 8h | SQA |
| 45 | 2.9 | Correção do Diagrama de Caso de Uso | manual | 1d | 2015-01-27 A | 2015-01-27 A | 44 | 100% |  | Alex | 8h | 8h | Analista e Projetista |
| 46 | 2.10 | Definir Modelo Conceitual Inicial | manual | 2d | 2015-01-28 A | 2015-01-29 A | 45 | 100% |  | Rogerio | 16h | 16h | Analista e Projetista |
| 47 | 2.11 | Revisão do Modelo Conceitual Inicial | manual | 1d | 2015-01-30 A | 2015-01-30 A | 46 | 100% |  | Renan | 8h | 8h | SQA |
| 48 | 2.12 | Correção do Modelo Conceitual Inicial | manual | 1d | 2015-01-31 A | 2015-01-31 A | 47 | 100% |  | Rogerio | 8h | 8h | Analista e Projetista |
| 49 | 2.13 | Construir - Analisar - RTF | milestone, manual | 0d | 2015-01-31 | 2015-01-31 |  |  |  |  |  |  |  |
| 50 | 2.14 | Refinar Modelo Conceitual | manual | 2d | 2015-02-01 A | 2015-02-02 A | 48 | 100% |  | Alex | 16h | 16h | Analista e Projetista |
| 51 | 2.15 | Revisar Refinar Modelo Conceitual | manual | 1d | 2015-02-03 A | 2015-02-03 A | 50 | 100% |  | Roberto | 8h | 8h | SQA |
| 52 | 2.16 | Correção Refinar Modelo Conceitual | manual | 1d | 2015-02-04 A | 2015-02-04 A | 51 | 100% |  | Alex | 8h | 8h | Analista e Projetista |
| 53 | 2.17 | Definir Diagrama de Sequência do Sistema | manual | 3d | 2015-02-05 A | 2015-02-07 A | 52 | 100% |  | Rogerio | 24h | 24h | Analista e Projetista |
| 54 | 2.18 | Revisar Diagrama de Sequência do Sistema | manual | 1d | 2015-02-08 A | 2015-02-08 A | 53 | 100% |  | Renan | 8h | 8h | SQA |
| 55 | 2.19 | Correção do Diagrama de Sequência do Sistema | manual | 1d | 2015-02-09 A | 2015-02-09 A | 54 | 100% |  | Rogerio | 8h | 8h | Analista e Projetista |
| 56 | 2.20 | Construir - Projetar - RTF | milestone, manual | 0d | 2015-02-10 | 2015-02-10 |  |  |  |  |  |  |  |
| 57 | 2.21 | Diagrama de Colaboração | manual | 2d | 2015-02-10 A | 2015-02-11 A | 55 | 100% |  | Alex | 16h | 16h | Analista e Projetista |
| 58 | 2.22 | Revisar Diagrama de Colaboração | manual | 1d | 2015-02-12 A | 2015-02-12 A | 57 | 100% |  | Roberto | 8h | 8h | SQA |
| 59 | 2.23 | Correção do Diagrama de Colaboração | manual | 1d | 2015-02-13 A | 2015-02-13 A | 58 | 100% |  | Alex | 8h | 8h | Analista e Projetista |
| 60 | 2.24 | Definir Diagrama de Classe do Projeto | manual | 2d | 2015-02-14 A | 2015-02-15 A | 59 | 100% |  | Rogerio | 16h | 16h | Analista e Projetista |
| 61 | 2.25 | Revisar Diagrama de Classe do Projeto | manual | 1d | 2015-02-16 A | 2015-02-16 A | 60 | 100% |  | Renan | 8h | 8h | SQA |
| 62 | 2.26 | Correção do Diagrama de Classe do Projeto | manual | 1d | 2015-02-17 A | 2015-02-17 A | 61 | 100% |  | Rogerio | 8h | 8h | Analista e Projetista |
| 63 | 2.27 | Construir - Codificação | manual | 2d | 2015-02-18 A | 2015-02-19 A | 62 | 100% |  | Haroldo | 16h | 16h | Programador |
| 64 | 2.28 | Construir Teste | manual | 2d | 2015-02-20 A | 2015-02-21 A | 63 | 100% |  | Renan; Roberto | 32h | 32h | SQA |

| ID | WBS | Task | Type | Duration | Start | Finish | Predecessors | Resources | Work | Classe do Recurso |
| --- | --- | --- | --- | --- | --- | --- | --- | --- | --- | --- |
| 65 | 3 | **Ciclo III - RF 3, 10 - Planejar e Elaborar** |  | 28d | 2015-02-22 | 2015-03-31 |  |  | 400h |  |
| 66 | 3.1 | Caso de Uso de Alto Nível | manual | 2d | 2015-02-22 | 2015-02-23 |  | Alex | 16h | Analista e Projetista |
| 67 | 3.2 | Revisão dos Casos de Uso de Alto Nível | manual | 1d | 2015-02-24 | 2015-02-24 | 66 | Renan | 8h | SQA |
| 68 | 3.3 | Correção dos Casos de Uso de Alto Nível | manual | 1d | 2015-02-25 | 2015-02-25 | 67 | Alex | 8h | Analista e Projetista |
| 69 | 3.4 | Caso de Uso Expandido | manual | 2d | 2015-02-26 | 2015-02-27 | 68 | Rogerio | 16h | Analista e Projetista |
| 70 | 3.5 | Revisão dos Casos de Uso Expandido | manual | 1d | 2015-02-28 | 2015-02-28 | 69 | Roberto | 8h | SQA |
| 71 | 3.6 | Correção dos Casos de Uso Expandido | manual | 1d | 2015-03-02 | 2015-03-02 | 70 | Rogerio | 8h | Analista e Projetista |
| 72 | 3.7 | Diagrama de Caso de Uso | manual | 2d | 2015-02-26 | 2015-02-27 | 69SS | Alex | 16h | Analista e Projetista |
| 73 | 3.8 | Revisão do Diagrama de Caso de Uso | manual | 1d | 2015-02-28 | 2015-02-28 | 72 | Renan | 8h | SQA |
| 74 | 3.9 | Correção do Diagrama de Caso de Uso | manual | 1d | 2015-03-01 | 2015-03-01 | 73 | Alex | 8h | Analista e Projetista |
| 75 | 3.10 | Definir Modelo Conceitual Inicial | manual | 2d | 2015-03-03 | 2015-03-04 | 74, 71 | Rogerio | 16h | Analista e Projetista |
| 76 | 3.11 | Revisão do Modelo Conceitual Inicial | manual | 1d | 2015-03-05 | 2015-03-05 | 75 | Roberto | 8h | SQA |
| 77 | 3.12 | Correção do Modelo Conceitual Inicial | manual | 1d | 2015-03-06 | 2015-03-06 | 76 | Rogerio | 8h | Analista e Projetista |
| 78 | 3.13 | Construir - Analisar - RTF | milestone, manual | 0d | 2015-03-07 | 2015-03-07 |  |  |  |  |
| 79 | 3.14 | Refinar Modelo Conceitual | manual | 2d | 2015-03-07 | 2015-03-08 | 77 | Alex | 16h | Analista e Projetista |
| 80 | 3.15 | Revisar Refinar Modelo Conceitual | manual | 1d | 2015-03-09 | 2015-03-09 | 79 | Renan | 8h | SQA |
| 81 | 3.16 | Correção Refinar Modelo Conceitual | manual | 1d | 2015-03-10 | 2015-03-10 | 80 | Alex | 8h | Analista e Projetista |
| 82 | 3.17 | Definir Diagrama de Sequência do Sistema | manual | 2d | 2015-03-03 | 2015-03-04 | 71, 75SS | Rogerio | 16h | Analista e Projetista |
| 83 | 3.18 | Revisar Diagrama de Sequência do Sistema | manual | 1d | 2015-03-05 | 2015-03-05 | 82 | Roberto | 8h | SQA |
| 84 | 3.19 | Correção do Diagrama de Sequência do Sistema | manual | 1d | 2015-03-06 | 2015-03-06 | 83 | Rogerio | 8h | Analista e Projetista |
| 85 | 3.20 | Construir - Projetar - RTF | milestone, manual | 0d | 2015-03-07 | 2015-03-07 |  |  |  |  |
| 86 | 3.21 | Diagrama de Colaboração | manual | 3d | 2015-03-07 | 2015-03-10 | 84, 77 | Alex | 24h | Analista e Projetista |
| 87 | 3.22 | Revisar Diagrama de Colaboração | manual | 1d | 2015-03-11 | 2015-03-11 | 86 | Renan | 8h | SQA |
| 88 | 3.23 | Correção do Diagrama de Colaboração | manual | 1d | 2015-03-12 | 2015-03-12 | 87 | Alex | 8h | Analista e Projetista |
| 89 | 3.24 | Definir Diagrama de Classe do Projeto | manual | 2d | 2015-03-13 | 2015-03-14 | 88 | Rogerio | 16h | Analista e Projetista |
| 90 | 3.25 | Revisar Diagrama de Classe do Projeto | manual | 1d | 2015-03-15 | 2015-03-15 | 89 | Roberto | 8h | SQA |
| 91 | 3.26 | Correção do Diagrama de Classe do Projeto | manual | 1d | 2015-03-16 | 2015-03-16 | 90 | Rogerio | 8h | Analista e Projetista |
| 92 | 3.27 | Construir - Codificação | manual | 5d | 2015-03-17 | 2015-03-23 | 91 | Haroldo | 40h | Programador |
| 93 | 3.28 | Construir Teste | manual | 2d | 2015-03-24 | 2015-03-25 | 92 | Renan; Roberto | 32h | SQA |
| 94 | 3.29 | Integração do Sistema/Instalação | milestone, manual | 4d | 2015-03-26 | 2015-03-31 | 93 | Haroldo; Thiago; Valdir | 64h |  |
